# LP_v2_Phase1_from_MP.xml

Schedule from MS Project, 2015-02-23 to 2015-07-15, costs in $, A marks actual dates.

## Calendars

- Standard[Imported][Imported][Imported]: Mon-Fri 08:00-12:00, 13:00-17:00; Sat-Sun off.

## Resources

| Resource | Rate |
| --- | --- |
| Unassigned |  |
| Anup | 10 |
| Vishnu | 10 |
| Santhosh | 10 |
| Vinay | 10 |
| Harsha | 10 |
| Sailesh | 10 |
| Bhum | 10 |
| Eric | 10 |
| Rimu | 10 |
| Joji | 10 |
| JJ | 10 |
| Kiran | 10 |
| Joe | 10 |
| Sandip | 10 |
| Rajesh | 10 |
| Infonam1 | 10 |
| Infonam2 | 10 |
| Test2 | 10 |
| Jaya | 10 |
| Infonam3 | 10 |
| Won | 10 |

## Schedule

| ID | WBS | Task | Duration | Start | Finish | Predecessors | Complete | Constraint | Resources | Work | Actual work | Cost | Actual cost |
| --- | --- | --- | --- | --- | --- | --- | --- | --- | --- | --- | --- | --- | --- |
| 1 | 1 | **Phase1 M1** | 53d | 2015-02-23 A | 2015-05-06 A |  | 100% |  |  | 560h | 560h | 5,600 | 5,600 |
| 2 | 2 | **RTL Design** | 53d | 2015-02-23 A | 2015-05-06 A |  | 100% |  |  | 256h | 256h | 2,560 | 2,560 |
| 3 | 2.1 | Micro-arch document | 3d | 2015-02-23 A | 2015-02-25 A |  | 100% |  | Joji; Rimu | 48h | 48h | 480 | 480 |
| 4 | 2.5 | MB changes | 5d | 2015-04-09 A | 2015-04-15 A |  | 100% | start no earlier than 2015-04-09 | Joji | 40h | 40h | 400 | 400 |
| 5 | 2.6 | SB and RTR changes | 5d | 2015-04-16 A | 2015-04-22 A | 3, 4 | 100% | start no earlier than 2015-03-16 | Rimu | 40h | 40h | 400 | 400 |
| 6 | 2.3 | Isolation LP Control signals to low | 1d | 2015-04-23 A | 2015-04-23 A | 4, 5 | 100% |  | Joji | 8h | 8h | 80 | 80 |
| 7 | 2.2 | V1 arch RTL cleanup in the design | 5d | 2015-04-30 A | 2015-05-06 A | 6 | 100% | start no earlier than 2015-03-09 | Rimu; Joji | 80h | 80h | 800 | 800 |
| 8 | 2.4 | **NSPS:** | 5d | 2015-04-23 A | 2015-04-29 A |  | 100% |  |  | 40h | 40h | 400 | 400 |
| 9 | 2.4.1 | Aggregation logic | 2d | 2015-04-28 A | 2015-04-29 A | 10 | 100% | start no earlier than 2015-03-23 | Rimu | 16h | 16h | 160 | 160 |
| 10 | 2.4.2 | PDS | 3d | 2015-04-23 A | 2015-04-27 A | 4, 5 | 100% | start no earlier than 2015-04-20 | Rimu | 24h | 24h | 240 | 240 |
| 11 | 1.7 | **Gen_ip:** | 34d | 2015-03-11 A | 2015-04-27 A |  | 100% |  |  | 80h | 80h | 800 | 800 |
| 12 | 1.7.1 | Valid traffic flow with PD information | 3d | 2015-03-11 A | 2015-03-13 A |  | 100% | start no earlier than 2015-03-11 | Anup | 24h | 24h | 240 | 240 |
| 13 | 1.2.2 | Valid traffic flow with CD information | 2d | 2015-04-20 A | 2015-04-21 A |  | 100% | start no earlier than 2015-04-20 | Anup | 16h | 16h | 160 | 160 |
| 14 | 1.7.2 | Cleanup of V1 architecture code | 1d | 2015-04-16 A | 2015-04-16 A |  | 100% | start no earlier than 2015-04-16 | Eric | 8h | 8h | 80 | 80 |
| 15 | 1.7.3 | Cleanup for REGBUS | 2d | 2015-04-17 A | 2015-04-20 A | 14 | 100% |  | Eric | 16h | 16h | 160 | 160 |
| 16 | 1.7.4 | V2 Architecture integration | 2d | 2015-04-24 A | 2015-04-27 A | 15, 6, 4, 5 | 100% | start no earlier than 2015-03-25 | Eric | 16h | 16h | 160 | 160 |
| 17 | 1.5 | **Tune_power:** | 6d | 2015-04-21 A | 2015-04-28 A |  | 100% |  |  | 48h | 48h | 480 | 480 |
| 18 | 1.5.1 | Cleanup for REGBUS | 1d | 2015-04-21 A | 2015-04-21 A |  | 100% | start no earlier than 2015-04-21 | Sailesh | 8h | 8h | 80 | 80 |
| 19 | 1.5.2 | Support for V2 architecture | 5d | 2015-04-22 A | 2015-04-28 A | 18 | 100% |  | Sailesh | 40h | 40h | 400 | 400 |
| 20 | 4.2 | **TB XTOR Sync changes** | 6d | 2015-03-17 A | 2015-03-24 A |  | 100% |  |  | 48h | 48h | 480 | 480 |
| 21 | 4.2.2 | SYNC_UNIT design | 2d | 2015-03-23 A | 2015-03-24 A |  | 100% | start no earlier than 2015-03-23 | Harsha | 16h | 16h | 160 | 160 |
| 22 | 4.2.3 | CXT changes for sync | 2d | 2015-03-17 A | 2015-03-18 A |  | 100% | start no earlier than 2015-03-17 | Joe | 16h | 16h | 160 | 160 |
| 23 | 4.2.4 | AHBXTOR changes for sync | 1d | 2015-03-19 A | 2015-03-19 A |  | 100% | start no earlier than 2015-03-19 | Jaya | 8h | 8h | 80 | 80 |
| 24 | 4.2.5 | AMBAXTOR (Sanity) changes for sync | 1d | 2015-03-20 A | 2015-03-20 A |  | 100% | start no earlier than 2015-03-20 | Joe | 8h | 8h | 80 | 80 |
| 25 | 4.2.1 | PMXTOR design | 6d | 2015-03-11 A | 2015-03-18 A |  | 100% | start no earlier than 2015-03-11 | Vishnu | 48h | 48h | 480 | 480 |
| 26 | 1.6 | GenStreamX changes for LP TB integration | 3d | 2015-05-04 A | 2015-05-06 A | 11, 20, 25 | 100% | start no earlier than 2015-05-04 | Santhosh | 24h | 24h | 240 | 240 |
| 27 | 4.1 | Test/Coverage Plan | 7d | 2015-03-02 A | 2015-03-10 A |  | 100% | start no earlier than 2015-03-02 | Vishnu | 56h | 56h | 560 | 560 |

Notes:
- 4: Joji gave a patch to Rimu on 04_17 but cleanup yet to be done
- 6: This task is not just Joji and Rimu, other logic design block owner have to make sure the isolated values are low/zero.
- 14: Need to get information about what RTL will be cleaned-up, and appropriately cleanup in NocStudio code.
- 15: Need to get information about what RTL will be cleaned-up, and appropriately cleanup in NocStudio code.

| ID | WBS | Task | Duration | Start | Finish | Predecessors | Complete | Remaining | Total slack | Free slack | Constraint | Resources | Work | Actual work | Cost | Actual cost |
| --- | --- | --- | --- | --- | --- | --- | --- | --- | --- | --- | --- | --- | --- | --- | --- | --- |
| 28 | 2 | **Phase1 M2** | 18d | 2015-04-20 A | 2015-05-13 |  | 98% | 0.34d | 0d |  |  |  | 272h | 266.4h | 2,720 | 2,664 |
| 29 | 2.1 | Isolation of output ports to low | 4d | 2015-05-08 A | 2015-05-13 A |  | 100% |  |  |  | start no earlier than 2015-05-08 | Joji | 32h | 32h | 320 | 320 |
| 30 | 1.1 | **AXI4 GenCPF:** | 8d | 2015-04-22 A | 2015-05-01 A |  | 100% |  |  |  |  |  | 64h | 64h | 640 | 640 |
| 31 | 1.1.1 | Cleanup for REGBUS | 1d | 2015-04-22 A | 2015-04-22 A | 13 | 100% |  |  |  | start no earlier than 2015-03-16 | Anup | 8h | 8h | 80 | 80 |
| 32 | 1.1.2 | Changes from pin-level to PD level Iso rules | 1d | 2015-04-23 A | 2015-04-23 A | 31 | 100% |  |  |  | start no earlier than 2015-03-17 | Anup | 8h | 8h | 80 | 80 |
| 33 | 1.1.3 | RTL grouping | 5d | 2015-04-24 A | 2015-04-30 A | 32 | 100% |  |  |  | start no earlier than 2015-03-18 | Anup | 40h | 40h | 400 | 400 |
| 34 | 1.1.4 | Tech and Lib pointers | 1d | 2015-05-01 A | 2015-05-01 A | 33 | 100% |  |  |  | start no earlier than 2015-03-25 | Anup | 8h | 8h | 80 | 80 |
| 35 | 4.13 | CLP scritps | 2d | 2015-05-04 A | 2015-05-05 A | 30 | 100% |  |  |  | start no earlier than 2015-04-23 | Harsha | 16h | 16h | 160 | 160 |
| 36 | 4.6 | **Nemesis traffic generation** | 10d | 2015-04-20 A | 2015-05-01 A |  | 100% |  |  |  |  |  | 80h | 80h | 800 | 800 |
| 37 | 4.6.1 | SYNC_UNIT traffic generation * | 1d | 2015-04-20 A | 2015-04-20 A |  | 100% |  |  |  | start no earlier than 2015-03-18 | Santhosh | 8h | 8h | 80 | 80 |
| 38 | 4.6.2 | Power and Clock gating/enabling * | 5d | 2015-04-21 A | 2015-04-27 A | 37 | 100% |  |  |  | start no earlier than 2015-03-26 | Santhosh | 40h | 40h | 400 | 400 |
| 39 | 4.6.4 | Cold boot randomization * | 2d | 2015-04-28 A | 2015-04-29 A | 38 | 100% |  |  |  | start no earlier than 2015-04-08 | Santhosh | 16h | 16h | 160 | 160 |
| 40 | 4.6.5 | Error scenarios for LP * | 2d | 2015-04-30 A | 2015-05-01 A | 39 | 100% |  |  |  | start no earlier than 2015-04-10 | Santhosh | 16h | 16h | 160 | 160 |
| 41 | 4.8 | **AXI4 LP Checkers work** | 4d | 2015-05-07 A | 2015-05-12 A |  | 100% |  |  |  |  |  | 44h | 44h | 440 | 440 |
| 42 | 4.8.1 | Element level LP checker | 2d | 2015-05-07 A | 2015-05-08 A | 11, 26, 30 | 100% |  |  |  | start no earlier than 2015-04-20 | Vinay | 16h | 16h | 160 | 160 |
| 43 | 4.8.2 | Power Domain level Isolation LP checker | 2d | 2015-05-07 A | 2015-05-08 A | 11, 26, 35, 30 | 100% |  |  |  | start no earlier than 2015-03-09 | Harsha | 16h | 16h | 160 | 160 |
| 44 | 4.8.3 | NSPS PD Sequence LP checker | 2d | 2015-05-11 A | 2015-05-12 A | 43, 11, 26, 30 | 100% |  |  |  | start no earlier than 2015-05-08 | Santhosh [25%]; Harsha [75%] | 12h | 12h | 120 | 120 |
| 45 | 2.6 | CLP and LPS AXI4 hand written cfgs passing | 5d | 2015-05-07 A | 2015-05-13 A | 11, 17, 26, 35, 20, 25, 30 | 100% |  |  |  |  | Vishnu [50%] | 20h | 20h | 200 | 200 |
| 46 | 2.7 | Test/Coverage Plan Review | 2d | 2015-04-23 A | 2015-04-24 |  | 65% | 0.7d | 2.4d | 0d | start no earlier than 2015-04-23 | Vishnu | 16h | 10.4h | 160 | 104 |
| 47 | 3 | **Phase1 M3** | 18d | 2015-05-04 A | 2015-05-27 |  | 88% | 2.1d | 35d |  |  |  | 424h | 368h | 4,240 | 3,680 |
| 48 | 3.1 | NS integration of AHB master splitting | 3d | 2015-05-14 A | 2015-05-18 A |  | 100% |  |  |  | start no earlier than 2015-05-14 | Eric | 24h | 24h | 240 | 240 |
| 49 | 1.3 | **AXI4 GenLPBindCheckers:** | 3d | 2015-05-11 A | 2015-05-13 A |  | 100% |  |  |  |  |  | 24h | 24h | 240 | 240 |
| 50 | 1.3.1 | Element level LP checker | 1d | 2015-05-11 A | 2015-05-11 A | 11, 42 | 100% |  |  |  | start no earlier than 2015-03-26 | Anup | 8h | 8h | 80 | 80 |
| 51 | 1.3.2 | Power Domain level Isolation LP checker | 1d | 2015-05-12 A | 2015-05-12 A | 11, 50, 43 | 100% |  |  |  |  | Anup | 8h | 8h | 80 | 80 |
| 52 | 1.3.3 | NSPS PD Sequence LP checker | 1d | 2015-05-13 A | 2015-05-13 A | 11, 51, 44 | 100% |  |  |  | start no earlier than 2015-05-13 | Anup | 8h | 8h | 80 | 80 |

| ID | WBS | Task | Duration | Start | Finish | Predecessors | Complete | Remaining | Total slack | Free slack | Constraint | Resources | Work | Actual work | Cost | Actual cost |
| --- | --- | --- | --- | --- | --- | --- | --- | --- | --- | --- | --- | --- | --- | --- | --- | --- |
| 53 | 1.1 | **Non-AXI4 GenCPF:** | 3d | 2015-05-04 A | 2015-05-06 A |  | 100% |  |  |  |  |  | 24h | 24h | 240 | 240 |
| 54 | 1.1.2 | Changes from pin-level to PD level Iso rules | 1d | 2015-05-04 A | 2015-05-04 A | 34 | 100% |  |  |  | start no earlier than 2015-04-16 | Anup | 8h | 8h | 80 | 80 |
| 55 | 1.1.3 | RTL grouping | 1d | 2015-05-05 A | 2015-05-05 A | 54, 33 | 100% |  |  |  | start no earlier than 2015-05-05 | Anup | 8h | 8h | 80 | 80 |
| 56 | 1.1.4 | Tech and Lib pointers | 1d | 2015-05-06 A | 2015-05-06 A | 55, 34 | 100% |  |  |  | start no earlier than 2015-04-22 | Anup | 8h | 8h | 80 | 80 |
| 57 | 1.3 | **Non-AXI4 GenLPBindCheckers:** | 3d | 2015-05-19 A | 2015-05-21 A |  | 100% |  |  |  |  |  | 24h | 24h | 240 | 240 |
| 58 | 1.3.1 | Element level LP checker | 1d | 2015-05-19 A | 2015-05-19 A | 2, 11, 53, 62 | 100% |  |  |  | start no earlier than 2015-04-23 | Anup | 8h | 8h | 80 | 80 |
| 59 | 1.3.2 | Power Domain level Isolation LP checker | 1d | 2015-05-20 A | 2015-05-20 A | 58, 2, 11, 53, 63 | 100% |  |  |  | start no earlier than 2015-05-06 | Anup | 8h | 8h | 80 | 80 |
| 60 | 1.3.3 | NSPS PD Sequence LP checker | 1d | 2015-05-21 A | 2015-05-21 A | 59, 2, 11, 53 | 100% |  |  |  | start no earlier than 2015-05-13 | Anup | 8h | 8h | 80 | 80 |
| 61 | 4.8 | **Non-AXI4 LP Checkers work** | 6d | 2015-05-11 A | 2015-05-18 |  | 91% | 0.51d | 42d |  |  |  | 56h | 51.2h | 560 | 512 |
| 62 | 4.8.1 | Element level LP checker | 6d | 2015-05-11 A | 2015-05-18 | 42 | 90% | 0.6d | 42d |  | start no earlier than 2015-03-25 | Vinay | 48h | 43.2h | 480 | 432 |
| 63 | 4.8.2 | Power Domain level Isolation LP checker | 1d | 2015-05-13 A | 2015-05-13 A | 43, 44 | 100% |  |  |  | start no earlier than 2015-03-18 | Harsha | 8h | 8h | 80 | 80 |
| 64 | 3.6 | AXI4 Handwritten cfgs CDC runs | 5d | 2015-05-14 A | 2015-05-20 A | 45 | 100% |  |  |  | start no earlier than 2015-04-14 | Sandip | 40h | 40h | 400 | 400 |
| 65 | 3.7 | AXI4 Handwritten cfgs Synthesis runs | 10d | 2015-05-14 A | 2015-05-27 | 45 | 50% | 5d | 17d | 0d | finish no earlier than 2015-04-24 | Rajesh | 80h | 40h | 800 | 400 |
| 66 | 3.8 | CLP NW Regression health (AXI4 80%) | 10d | 2015-05-14 A | 2015-05-27 A | 45 | 100% |  |  |  |  | Vishnu [25%] | 20h | 20h | 200 | 200 |
| 67 | 3.9 | LPS NW Regression health (AXI4 80% w/o host checkers) | 10d | 2015-05-14 A | 2015-05-27 A | 45 | 100% |  |  |  | start no earlier than 2015-04-08 | Vishnu [25%] | 20h | 20h | 200 | 200 |
| 68 | 3.10 | Code Coverage (AXI4 80%) | 10d | 2015-05-14 A | 2015-05-27 A | 45 | 100% |  |  |  | start no earlier than 2015-05-13 | Harsha [50%]; Rimu [25%]; Joji [25%] | 80h | 80h | 800 | 800 |
| 69 | 3.11 | Verification Plan Documentation and Review | 8d | 2015-05-14 A | 2015-05-25 | 75 | 65% | 2.8d | 37d |  | start no earlier than 2015-05-14 | Vishnu [50%] | 32h | 20.8h | 320 | 208 |
| 70 | 4 | **Phase1 M4** | 33d | 2015-04-27 A | 2015-06-10 |  | 72% | 9.18d | 25d |  |  |  | 822h | 612.4h | 8,220 | 6,124 |
| 71 | 3 | **SW Verif** | 23d | 2015-04-27 A | 2015-05-27 |  | 95% | 1.15d | 35d |  |  |  | 352h | 334.4h | 3,520 | 3,344 |
| 72 | 3.1 | **Testplan:** | 5d | 2015-04-27 A | 2015-05-01 |  | 88% | 0.6d | 53d |  |  |  | 40h | 35.2h | 400 | 352 |
| 73 | 3.1.1 | Tune_power | 3d | 2015-04-27 A | 2015-04-29 | 46 | 80% | 0.6d | 55d |  | start no earlier than 2015-04-20 | Bhum | 24h | 19.2h | 240 | 192 |
| 74 | 3.1.2 | CPFs | 1d | 2015-04-30 A | 2015-04-30 A | 73, 46 | 100% |  |  |  | start no earlier than 2015-04-27 | Vishnu | 8h | 8h | 80 | 80 |
| 75 | 3.1.3 | LP RTL | 1d | 2015-05-01 A | 2015-05-01 A | 74, 46 | 100% |  |  |  | start no earlier than 2015-04-28 | Vishnu | 8h | 8h | 80 | 80 |
| 76 | 3.2 | **Verif** | 15d | 2015-05-07 A | 2015-05-27 |  | 96% | 0.62d | 35d |  |  |  | 312h | 299.2h | 3,120 | 2,992 |
| 77 | 3.2.1 | Tune_power | 6d | 2015-05-07 A | 2015-05-14 | 75, 53 | 90% | 0.6d | 44d |  | start no earlier than 2015-03-25 | Bhum | 48h | 43.2h | 480 | 432 |
| 78 | 3.2.2 | CPFs | 8d | 2015-05-07 A | 2015-05-18 A | 75, 53 | 100% |  |  |  | start no earlier than 2015-04-29 | Infonam1 | 64h | 64h | 640 | 640 |
| 79 | 3.2.3 | LP RTL | 10d | 2015-05-07 A | 2015-05-20 | 75, 53 | 90% | 1d | 40d |  | start no earlier than 2015-04-29 | Infonam2 | 80h | 72h | 800 | 720 |
| 80 | 3.2.4 | LP Property Coverage monitor | 15d | 2015-05-07 A | 2015-05-27 A | 75, 53 | 100% |  |  |  | start no earlier than 2015-05-05 | Infonam3 | 120h | 120h | 1,200 | 1,200 |
| 81 | 4.4 | Error PD & CD Sequence test | 6d | 2015-05-13 A | 2015-05-20 A | 36, 44 | 100% |  |  |  | start no earlier than 2015-03-30 | Santhosh | 48h | 48h | 480 | 480 |

| ID | WBS | Task | Duration | Start | Finish | Predecessors | Complete | Remaining | Total slack | Free slack | Constraint | Resources | Work | Actual work | Cost | Actual cost |
| --- | --- | --- | --- | --- | --- | --- | --- | --- | --- | --- | --- | --- | --- | --- | --- | --- |
| 82 | 1.1.6 | **CPFs for DVFS** | 8d | 2015-04-29 A | 2015-05-08 A |  | 100% |  |  |  |  |  | 48h | 48h | 480 | 480 |
| 83 | 1.1.6.1 | Definition of DVFS modes of operation | 4d | 2015-04-29 A | 2015-05-04 A | 19 | 100% |  |  |  | start no earlier than 2015-04-20 | Sailesh | 32h | 32h | 320 | 320 |
| 84 | 1.1.6.2 | GenCPF update for DVFS | 2d | 2015-05-07 A | 2015-05-08 A | 83, 56 | 100% |  |  |  | start no earlier than 2015-05-04 | Anup | 16h | 16h | 160 | 160 |
| 85 | 1.1.5 | **CPFs for Scan** | 12d | 2015-04-30 A | 2015-05-15 A |  | 100% |  |  |  |  |  | 32h | 32h | 320 | 320 |
| 86 | 1.1.5.1 | Definition of Scan aware synthesis strategy | 2d | 2015-04-30 A | 2015-05-01 A |  | 100% |  |  |  | start no earlier than 2015-04-30 | Rajesh | 16h | 16h | 160 | 160 |
| 87 | 1.1.5.2 | GenCPF update for Scan | 2d | 2015-05-14 A | 2015-05-15 A | 86, 84, 52 | 100% |  |  |  | start no earlier than 2015-05-11 | Anup | 16h | 16h | 160 | 160 |
| 88 | 4.5 | AXI4 and Non-AXI4 CDC runs | 10d | 2015-05-21 A | 2015-06-03 | 11, 64 | 50% | 5d | 20d | 0d | finish no earlier than 2015-04-10 | Sandip | 80h | 40h | 800 | 400 |
| 89 | 4.6 | AXI4 and Non-AXI4 Synthesis runs | 10d | 2015-05-28 | 2015-06-10 | 65, 11 |  |  | 17d | 0d | finish no earlier than 2015-04-24 | Rajesh | 80h |  | 800 |  |
| 90 | 4.7 | Functional Coverage Coding (70%) | 10d | 2015-05-21 A | 2015-06-03 | 81, 44 | 30% | 7d | 1d | 0d | start no earlier than 2015-05-21 | Vinay [25%]; Santhosh [50%] | 50h | 18h | 500 | 180 |
| 91 | 4.8 | CLP NW Regression health (AXI4 100%, Non-AXI4 90%) | 10d | 2015-05-28 A | 2015-06-10 | 66 | 80% | 2d | 8d | 0d |  | Santhosh [25%]; Vishnu [25%] | 40h | 32h | 400 | 320 |
| 92 | 4.9 | LPS NW Regression health (AXI4 100%, Non-AXI4 90%) | 10d | 2015-05-28 A | 2015-06-10 | 67 | 80% | 2d | 8d | 0d | start no earlier than 2015-04-21 | Vinay [25%]; Vishnu [25%] | 40h | 32h | 400 | 320 |
| 93 | 4.10 | Code Coverage (AXI4 100%, Non-AXI4 90%) | 10d | 2015-05-28 A | 2015-06-10 | 68 | 70% | 3d | 5.6d | 0d | start no earlier than 2015-05-28 | Harsha [50%] | 40h | 28h | 400 | 280 |
| 94 | 4.11 | Functional Coverage (50%) | 3d | 2015-06-04 | 2015-06-08 | 90 |  |  | 22d | 2d |  | Harsha [50%] | 12h |  | 120 |  |
| 95 | 5 | **Phase1 M5** | 15d | 2015-06-04 A | 2015-06-24 |  | 38% | 9.25d | 15d |  |  |  | 246h | 49.2h | 2,460 | 492 |
| 96 | 5.1 | Functional Coverage Coding (100%) | 5d | 2015-06-04 A | 2015-06-10 | 90 | 20% | 4d | 20d | 0d |  | Vinay [25%]; Santhosh [50%] | 30h | 6h | 300 | 60 |
| 97 | 5.2 | Functional Coverage (100%) | 5d | 2015-06-11 | 2015-06-17 | 96, 94 |  |  | 20d |  | start no earlier than 2015-06-11 | Vinay [25%] | 10h |  | 100 |  |
| 98 | 5.3 | CLP NW Regression health (100%) | 10d | 2015-06-11 A | 2015-06-24 | 91 | 80% | 2d | 15d |  |  | Vinay [25%] | 20h | 16h | 200 | 160 |
| 99 | 5.4 | LPS NW Regression health (100%) | 10d | 2015-06-11 A | 2015-06-24 | 92 | 80% | 2d | 15d |  |  | Vinay [25%] | 20h | 16h | 200 | 160 |
| 100 | 5.5 | Code Coverage (100%) | 7d | 2015-06-11 A | 2015-06-19 | 93 | 80% | 1.4d | 18d |  |  | Vinay [25%] | 14h | 11.2h | 140 | 112 |
| 101 | 5.6 | CDC runs on customer and super cfgs | 10d | 2015-06-04 | 2015-06-17 | 88 |  |  | 20d |  |  | Sandip | 80h |  | 800 |  |
| 102 | 5.7 | CLP and RC at pre and post synthesis on customer and super cfgs | 8d | 2015-06-11 | 2015-06-22 | 89 |  |  | 17d |  |  | Rajesh | 64h |  | 640 |  |
| 103 | 5.8 | Checklist status review | 4d | 2015-06-11 | 2015-06-16 | 91, 92 |  |  | 21d |  | start no earlier than 2015-05-27 | Vishnu [25%] | 8h |  | 80 |  |
| 104 | 6 | **Phase2 M6** | 41d | 2015-05-20 A | 2015-07-15 |  | 16% | 34.58d | 0d |  |  |  | 1040h | 160h | 10,400 | 1,600 |
| 105 | 6.1 | **RTL Design** | 5d | 2015-05-27 A | 2015-06-02 A |  | 100% |  |  |  |  |  | 48h | 48h | 480 | 480 |
| 106 | 6.1.1 | Voltage Crossing FIFO | 2d | 2015-05-28 A | 2015-05-29 A |  | 100% |  |  |  | start no earlier than 2015-05-28 | Joji | 16h | 16h | 160 | 160 |
| 107 | 6.1.2 | RBM and RM changes | 2d | 2015-05-27 A | 2015-05-28 A |  | 100% |  |  |  | start no earlier than 2015-05-27 | Jaya | 16h | 16h | 160 | 160 |
| 108 | 6.1.3 | Bridge hierarchy modifications for Voltage Crossing and Integration of FIFO | 2d | 2015-06-01 A | 2015-06-02 A | 106 | 100% |  |  |  |  | Joji | 16h | 16h | 160 | 160 |

| ID | WBS | Task | Duration | Start | Finish | Predecessors | Complete | Remaining | Total slack | Free slack | Constraint | Resources | Work | Actual work | Cost | Actual cost |
| --- | --- | --- | --- | --- | --- | --- | --- | --- | --- | --- | --- | --- | --- | --- | --- | --- |
| 109 | 6.2 | **Gen_ip** | 21d | 2015-05-29 A | 2015-06-26 |  | 43% | 12d | 13d |  |  |  | 48h | 20h | 480 | 200 |
| 110 | 6.2.1 | Integration for bridge hierarchy modifications | 3d | 2015-06-24 | 2015-06-26 | 106, 108 |  |  | 3d | 0d | start no earlier than 2015-06-24 | Eric | 24h |  | 240 |  |
| 111 | 6.2.2 | regbus elements LP signal aggregation | 2d | 2015-05-29 A | 2015-06-01 A | 107 | 100% |  |  |  |  | Eric | 16h | 16h | 160 | 160 |
| 112 | 6.2.3 | valid traffic flows for DVFS | 1d | 2015-06-03 | 2015-06-03 | 106, 108 |  |  | 37d |  |  | Eric [50%] | 4h |  | 40 |  |
| 113 | 6.2.4 | valid traffic flows for regbus | 1d | 2015-06-01 A | 2015-06-01 A |  | 100% |  |  |  | start no earlier than 2015-06-01 | Eric [50%] | 4h | 4h | 40 | 40 |
| 114 | 6.3 | **Gen_CPF** | 24d | 2015-06-02 A | 2015-07-03 |  | 38% | 15d | 3d |  |  |  | 64h | 24h | 640 | 240 |
| 115 | 6.3.1 | CPFs for DVFS | 2d | 2015-06-29 | 2015-06-30 | 110 |  |  | 10d | 0d |  | Anup | 16h |  | 160 |  |
| 116 | 6.3.2 | CPFS for regbus | 3d | 2015-06-02 A | 2015-06-04 A | 111 | 100% |  |  |  |  | Anup | 24h | 24h | 240 | 240 |
| 117 | 6.3.3 | tech and Lib pointers | 1d | 2015-07-01 | 2015-07-01 | 115, 116 |  |  | 10d | 0d |  | Anup | 8h |  | 80 |  |
| 118 | 6.3.4 | sdc generation | 1d | 2015-07-02 | 2015-07-02 | 117 |  |  | 10d | 0d |  | Anup | 8h |  | 80 |  |
| 119 | 6.3.5 | RTL grouping | 1d | 2015-07-03 | 2015-07-03 | 118 |  |  | 10d | 0d |  | Anup | 8h |  | 80 |  |
| 120 | 6.4 | Verif Plan for DVFS | 2d | 2015-05-20 A | 2015-05-21 A |  | 100% |  |  |  | start no earlier than 2015-05-20 | Won | 16h | 16h | 160 | 160 |
| 121 | 6.5 | Verif Plan for regbus | 3d | 2015-05-27 A | 2015-05-29 A |  | 100% |  |  |  |  | Jaya | 24h | 24h | 240 | 240 |
| 122 | 6.6 | Verif changes for new hierarchies | 2d | 2015-06-29 | 2015-06-30 | 110 |  |  | 18d |  |  | Won | 16h |  | 160 |  |
| 123 | 6.7 | regbus verif infra changes | 5d | 2015-06-01 | 2015-06-05 | 107, 121 |  |  | 0d |  |  | Jaya | 40h |  | 400 |  |
| 124 | 6.8 | DVFS verif infra changes | 4d | 2015-05-29 A | 2015-06-03 |  | 50% | 2d | 1.5d | 0d | start no earlier than 2015-05-29 | Won | 32h | 16h | 320 | 160 |
| 125 | 6.9 | GenStreamX changes for DVFS | 3d | 2015-06-04 A | 2015-06-08 | 124 | 50% | 1.5d | 27d |  |  | Won | 24h | 12h | 240 | 120 |
| 126 | 6.10 | GenStreamX changes for regbus | 3d | 2015-06-08 | 2015-06-10 | 123 |  |  | 0d |  |  | Jaya | 24h |  | 240 |  |
| 127 | 6.11 | Regbus sweep and error scenario tests | 5d | 2015-06-11 | 2015-06-17 | 123, 126 |  |  | 0d |  |  | Jaya | 40h |  | 400 |  |
| 128 | 6.12 | **Regbus LP checkers** | 7d | 2015-06-18 | 2015-06-26 |  |  |  | 0d |  |  |  | 56h |  | 560 |  |
| 129 | 6.12.1 | Element level LP checker | 4d | 2015-06-18 | 2015-06-23 | 127 |  |  | 0d |  |  | Jaya | 32h |  | 320 |  |
| 130 | 6.12.2 | Power Domain level Isolation LP checker | 3d | 2015-06-24 | 2015-06-26 | 129 |  |  | 0d |  |  | Jaya | 24h |  | 240 |  |
| 131 | 6.13 | NW for DVFS and regbus | 5d | 2015-07-06 | 2015-07-10 | 119 |  |  | 10d |  |  | Santhosh | 40h |  | 400 |  |
| 132 | 6.14 | CLP scripts for DVFS | 2d | 2015-06-29 | 2015-06-30 | 110, 111 |  |  | 18d |  |  | Vishnu | 16h |  | 160 |  |
| 133 | 6.15 | regbus code coverage analysis | 3d | 2015-06-18 | 2015-06-22 | 127 |  |  | 17d |  |  | Won | 24h |  | 240 |  |
| 134 | 6.16 | regbus functional coverage coding | 3d | 2015-06-29 | 2015-07-01 | 130 |  |  | 10d |  |  | Jaya | 24h |  | 240 |  |
| 135 | 6.17 | DVFS and REGBUS CDC runs | 10d | 2015-06-18 | 2015-07-01 | 127 |  |  | 10d |  |  | Sandip | 80h |  | 800 |  |
| 136 | 6.18 | DVFS and REGBUS Synthesis runs | 15d | 2015-06-18 | 2015-07-08 | 127 |  |  | 5d |  |  | Rajesh | 120h |  | 1,200 |  |
| 137 | 6.19 | DVFS and REGBUS CLP runs | 10d | 2015-06-18 | 2015-07-01 | 127 |  |  | 10d |  |  | Vishnu | 80h |  | 800 |  |
| 138 | 6.20 | LPS NW Regression runs | 10d | 2015-06-29 | 2015-07-10 | 130 |  |  | 3d |  |  | Vishnu | 80h |  | 800 |  |
| 139 | 6.21 | SW verification for DVFS and regbus | 5d | 2015-06-18 | 2015-06-24 | 127 |  |  | 15d |  |  | Bhum | 40h |  | 400 |  |
| 140 | 6.22 | Sanity bench | 5d | 2015-06-29 | 2015-07-03 | 130 |  |  | 0d |  |  | Vishnu | 40h |  | 400 |  |
| 141 | 6.23 | Documentation | 8d | 2015-07-06 | 2015-07-15 | 140 |  |  | 0d |  |  | Vishnu | 64h |  | 640 |  |
