# LP_v2_Phase1_from_MP.xml

Schedule from MS Project XML, 2015-02-23 to 2015-06-01, costs in $, A marks actual dates.

## Calendars

- Standard[Imported][Imported][Imported]: Mon-Fri 08:00-12:00, 13:00-17:00; Sat-Sun off.

## Resources

| Resource | Rate |
| --- | --- |
| Unassigned |  |
| Anup | 10 |
| Vishnu | 10 |
| Santhosh | 10 |
| Vinay | 10 |
| Harsha | 10 |
| Sailesh | 10 |
| Bhum | 10 |
| Eric | 10 |
| Rimu | 10 |
| Joji | 10 |
| JJ | 10 |
| Kiran | 10 |
| Joe | 10 |
| Sandip | 10 |
| Rajesh | 10 |
| Infonam1 | 10 |
| Infonam2 | 10 |
| Test2 | 10 |

## Schedule

| ID | WBS | Task | Duration | Start | Finish | Predecessors | Complete | Remaining | Total slack | Free slack | Constraint | Resources | Work | Actual work | Cost | Actual cost |
| --- | --- | --- | --- | --- | --- | --- | --- | --- | --- | --- | --- | --- | --- | --- | --- | --- |
| 1 | 1 | **Phase1 M1** | 28d | 2015-02-23 A | 2015-04-01 |  | 12% | 24.63d | 43d |  |  |  | 456h | 76h | 4,560 | 760 |
| 2 | 2 | **RTL Design** | 25d | 2015-02-23 A | 2015-03-27 |  | 9% | 22.73d | 44d | 18d |  |  | 288h | 48h | 2,880 | 480 |
| 3 | 2.1 | Micro-arch document | 3d | 2015-02-23 A | 2015-02-25 A |  | 100% |  |  |  |  | Joji; Rimu | 48h | 48h | 480 | 480 |
| 4 | 2.5 | MB changes | 5d | 2015-03-09 | 2015-03-13 |  |  |  | 49d | 5d | start no earlier than 2015-03-09 | Joji | 40h |  | 400 |  |
| 5 | 2.6 | SB and RTR changes | 5d | 2015-03-16 | 2015-03-20 | 3 |  |  | 44d | 0d | start no earlier than 2015-03-16 | Joji | 40h |  | 400 |  |
| 6 | 2.2 | V1 arch cleanup in the design | 10d | 2015-03-09 | 2015-03-20 |  |  |  | 11d | 0d | start no earlier than 2015-03-09 | Rimu | 80h |  | 800 |  |
| 7 | 2.4 | **NSPS:** | 5d | 2015-03-23 | 2015-03-27 |  |  |  | 44d |  |  |  | 40h |  | 400 |  |
| 8 | 2.4.1 | Aggregation logic | 2d | 2015-03-23 | 2015-03-24 | 4, 5 |  |  | 47d |  | start no earlier than 2015-03-23 | Rimu | 16h |  | 160 |  |
| 9 | 2.4.2 | PDS | 3d | 2015-03-25 | 2015-03-27 | 4, 5 |  |  | 44d |  | start no earlier than 2015-03-25 | Rimu | 24h |  | 240 |  |
| 10 | 2.3 | Isolation polarity changes for output ports * | 5d | 2015-03-23 | 2015-03-27 | 4, 5 |  |  | 44d |  |  | Joji | 40h |  | 400 |  |
| 11 | 1.7 | **Gen_ip:** | 11d | 2015-03-11 | 2015-03-25 |  |  |  | 10d | 0d |  |  | 48h |  | 480 |  |
| 12 | 1.7.1 | Valid traffic flow with PD information | 3d | 2015-03-11 | 2015-03-13 |  |  |  | 18d |  | start no earlier than 2015-03-11 | Anup | 24h |  | 240 |  |
| 13 | 1.7.2 | Cleanup of V1 architecture code | 1d | 2015-03-23 | 2015-03-23 | 6 |  |  | 12d |  | start no earlier than 2015-03-23 | Eric | 8h |  | 80 |  |
| 14 | 1.7.3 | Cleanup for REGBUS | 1d | 2015-03-24 | 2015-03-24 | 6 |  |  | 10d | 0d | start no earlier than 2015-03-24 | Eric | 8h |  | 80 |  |
| 15 | 1.7.4 | V2 Architecture integration | 1d | 2015-03-25 | 2015-03-25 | 14 |  |  | 10d |  | start no earlier than 2015-03-25 | Eric | 8h |  | 80 |  |
| 16 | 1.5 | **Tune_power:** | 8d | 2015-03-23 | 2015-04-01 |  |  |  | 43d |  |  |  | 48h |  | 480 |  |
| 17 | 1.5.1 | Cleanup for REGBUS | 1d | 2015-03-23 | 2015-03-23 |  |  |  | 50d |  | start no earlier than 2015-03-23 | Sailesh | 8h |  | 80 |  |
| 18 | 1.5.2 | Support for V2 architecture | 5d | 2015-03-26 | 2015-04-01 | 11 |  |  | 43d |  |  | Sailesh | 40h |  | 400 |  |
| 19 | 1.4 | GenStreamX changes to buildSim | 2d | 2015-03-26 | 2015-03-27 | 11 |  |  | 46d |  |  | Santhosh | 16h |  | 160 |  |
| 20 | 4.1 | Test/Coverage Plan | 7d | 2015-03-02 A | 2015-03-10 |  | 50% | 3.5d | 17d | 6d | start no earlier than 2015-03-02 | Vishnu | 56h | 28h | 560 | 280 |
| 21 | 2 | **Phase1 M2** | 26d | 2015-03-11 | 2015-04-15 |  |  |  | 11d |  |  |  | 200h |  | 2,000 |  |
| 22 | 1.1 | **AXI4 GenCPF:** | 8d | 2015-03-16 | 2015-03-25 |  |  |  | 10d | 0d |  |  | 64h |  | 640 |  |
| 23 | 1.1.1 | Cleanup for REGBUS | 1d | 2015-03-16 | 2015-03-16 |  |  |  | 17d |  | start no earlier than 2015-03-16 | Anup | 8h |  | 80 |  |
| 24 | 1.1.2 | Changes from pin-level to PD level Iso rules | 1d | 2015-03-17 | 2015-03-17 |  |  |  | 16d |  | start no earlier than 2015-03-17 | Anup | 8h |  | 80 |  |
| 25 | 1.1.3 | RTL grouping | 5d | 2015-03-18 | 2015-03-24 |  |  |  | 11d |  | start no earlier than 2015-03-18 | Anup | 40h |  | 400 |  |
| 26 | 1.1.4 | Tech and Lib pointers | 1d | 2015-03-25 | 2015-03-25 |  |  |  | 10d |  | start no earlier than 2015-03-25 | Anup | 8h |  | 80 |  |
| 27 | 4.13 | CLP scritps | 2d | 2015-03-16 | 2015-03-17 |  |  |  | 16d | 6d | start no earlier than 2015-03-16 | Harsha | 16h |  | 160 |  |
| 28 | 4.2.1 | PMXTOR design | 6d | 2015-03-11 | 2015-03-18 |  |  |  | 11d | 0d | start no earlier than 2015-03-11 | Vishnu | 48h |  | 480 |  |
| 29 | 4.11 | GenStreamX changes for PMXTOR etc | 2d | 2015-04-07 | 2015-04-08 | 11, 28 |  |  | 33d | 0d | start no earlier than 2015-04-07 | Santhosh | 16h |  | 160 |  |
| 30 | 2.5 | CLP and LPS AXI4 hand written cfgs passing | 5d | 2015-04-09 | 2015-04-15 | 29 |  |  | 33d |  |  | Harsha [50%]; Vinay [50%] | 40h |  | 400 |  |
| 31 | 2.6 | Test/Coverage Plan Review | 2d | 2015-03-19 | 2015-03-20 | 28, 20 |  |  | 51d |  |  | Vishnu | 16h |  | 160 |  |

| ID | WBS | Task | Duration | Start | Finish | Predecessors | Complete | Remaining | Total slack | Free slack | Constraint | Resources | Work | Actual work | Cost | Actual cost |
| --- | --- | --- | --- | --- | --- | --- | --- | --- | --- | --- | --- | --- | --- | --- | --- | --- |
| 32 | 3 | **Phase1 M3** | 43d | 2015-02-25 A | 2015-04-24 |  | 10% | 38.74d | 26d |  |  |  | 720h | 79.2h | 7,200 | 792 |
| 33 | 4.8 | **AXI4 LP Checkers work** | 20d | 2015-02-25 A | 2015-03-24 |  | 26% | 14.79d | 48d |  |  |  | 304h | 79.2h | 3,040 | 792 |
| 34 | 4.8.1 | Element level LP checker | 15d | 2015-02-25 A | 2015-03-17 |  | 40% | 9d | 53d | 6d | start no earlier than 2015-02-25 | Vinay | 120h | 48h | 1,200 | 480 |
| 35 | 4.8.2 | Power Domain level Isolation LP checker | 5d | 2015-03-09 | 2015-03-13 |  |  |  | 55d | 9d | start no earlier than 2015-03-09 | Harsha | 40h |  | 400 |  |
| 36 | 4.8.3 | NSPS PD Sequence LP checker | 13d | 2015-03-02 A | 2015-03-18 |  | 30% | 9.1d | 52d | 7d | start no earlier than 2015-03-02 | Santhosh | 104h | 31.2h | 1,040 | 312 |
| 37 | 4.8.4 | Clock domain or gating related checkers | 5d | 2015-03-18 | 2015-03-24 |  |  |  | 45d | 4d | start no earlier than 2015-03-18 | Vinay | 40h |  | 400 |  |
| 38 | 1.3 | **AXI4 GenLPBindCheckers:** | 7d | 2015-03-26 | 2015-04-03 |  |  |  | 41d |  |  |  | 56h |  | 560 |  |
| 39 | 1.3.1 | Element level LP checker | 1d | 2015-03-26 | 2015-03-26 | 34, 11 |  |  | 47d |  | start no earlier than 2015-03-26 | Anup | 8h |  | 80 |  |
| 40 | 1.3.2 | Power Domain level Isolation LP checker | 1d | 2015-03-27 | 2015-03-27 | 35, 11 |  |  | 46d |  | start no earlier than 2015-03-27 | Anup | 8h |  | 80 |  |
| 41 | 1.3.3 | NSPS PD Sequence LP checker | 1d | 2015-03-30 | 2015-03-30 | 36, 11 |  |  | 45d |  | start no earlier than 2015-03-30 | Anup | 8h |  | 80 |  |
| 42 | 1.3.4 | Clock domain or gating related checkers | 4d | 2015-03-31 | 2015-04-03 | 37, 11 |  |  | 41d |  | start no earlier than 2015-03-31 | Anup | 32h |  | 320 |  |
| 43 | 1.1 | **Non-AXI4 GenCPF:** | 6d | 2015-04-15 | 2015-04-22 |  |  |  | 28d |  |  |  | 48h |  | 480 |  |
| 44 | 1.1.1 | Cleanup for REGBUS | 1d | 2015-04-15 | 2015-04-15 | 11 |  |  | 33d |  | start no earlier than 2015-04-15 | Anup | 8h |  | 80 |  |
| 45 | 1.1.2 | Changes from pin-level to PD level Iso rules | 1d | 2015-04-16 | 2015-04-16 | 11 |  |  | 32d |  | start no earlier than 2015-04-16 | Anup | 8h |  | 80 |  |
| 46 | 1.1.3 | RTL grouping | 3d | 2015-04-17 | 2015-04-21 | 11 |  |  | 29d |  | start no earlier than 2015-04-17 | Anup | 24h |  | 240 |  |
| 47 | 1.1.4 | Tech and Lib pointers | 1d | 2015-04-22 | 2015-04-22 | 11 |  |  | 28d |  | start no earlier than 2015-04-22 | Anup | 8h |  | 80 |  |
| 48 | 4.3 | Valid PD & CD Sequence test | 4d | 2015-03-19 | 2015-03-24 | 20, 28 |  |  | 11d | 3d | start no earlier than 2015-03-19 | Santhosh | 32h |  | 320 |  |
| 49 | 3.5 | AXI4 Handwritten cfgs CDC runs | 5d | 2015-04-14 | 2015-04-20 | 11 |  |  | 5d | 0d | start no earlier than 2015-04-14 | Sandip | 40h |  | 400 |  |
| 50 | 3.6 | AXI4 Handwritten cfgs Synthesis runs | 10d | 2015-04-13 | 2015-04-24 | 11 |  |  | 0d |  | finish no earlier than 2015-04-24 | Rajesh | 80h |  | 800 |  |
| 51 | 3.7 | CLP NW Regression health (AXI4 80%) | 10d | 2015-03-26 | 2015-04-08 | 11, 22, 27 |  |  | 26d | 0d |  | Vishnu [50%] | 40h |  | 400 |  |
| 52 | 3.8 | LPS NW Regression health (AXI4 80% w/o host chechers) | 10d | 2015-04-08 | 2015-04-21 | 11, 22, 27, 48 |  |  | 1d | 0d | start no earlier than 2015-04-08 | Vishnu [50%] | 40h |  | 400 |  |
| 53 | 3.9 | Code Coverage (AXI4 80%) | 10d | 2015-04-08 | 2015-04-21 | 11, 22, 27, 48 |  |  | 2d | 0d | start no earlier than 2015-04-08 | Harsha [50%]; Rimu [25%]; Joji [25%] | 80h |  | 800 |  |
| 54 | 4 | **Phase1 M4** | 40d | 2015-03-16 | 2015-05-08 |  |  |  | 11d |  |  |  | 756h |  | 7,560 |  |
| 55 | 4.4 | Error PD & CD Sequence test | 5d | 2015-03-30 | 2015-04-03 | 48 |  |  | 41d |  | start no earlier than 2015-03-30 | Santhosh | 40h |  | 400 |  |

| ID | WBS | Task | Duration | Start | Finish | Predecessors | Total slack | Free slack | Constraint | Resources | Work | Cost |
| --- | --- | --- | --- | --- | --- | --- | --- | --- | --- | --- | --- | --- |
| 56 | 1.1.6 | **CPFs for DVFS** | 22d | 2015-04-02 | 2015-05-01 |  | 21d |  |  |  | 32h | 320 |
| 57 | 1.1.6.1 | Definition of DVFS modes of operation | 2d | 2015-04-02 | 2015-04-03 |  | 39d | 18d | start no earlier than 2015-04-02 | Sailesh | 16h | 160 |
| 58 | 1.1.6.2 | GenCPF update for DVFS | 2d | 2015-04-30 | 2015-05-01 | 57 | 21d |  | start no earlier than 2015-04-30 | Anup | 16h | 160 |
| 59 | 4.8 | **Non-AXI4 LP Checkers work** | 17.33d | 2015-03-18 | 2015-04-10 |  | 0.67d | 0d |  |  | 160h | 1,600 |
| 60 | 4.8.1 | Element level LP checker | 6d | 2015-03-25 | 2015-04-01 |  | 7d |  | start no earlier than 2015-03-25 | Vinay | 48h | 480 |
| 61 | 4.8.2 | Power Domain level Isolation LP checker | 9d | 2015-03-18 | 2015-03-30 |  | 9d |  | start no earlier than 2015-03-18 | Harsha | 72h | 720 |
| 62 | 4.8.3 | NSPS PD Sequence LP checker | 1.33d | 2015-04-09 | 2015-04-10 |  | 0.67d |  | start no earlier than 2015-04-09 | Santhosh [75%] | 8h | 80 |
| 63 | 4.8.4 | Clock domain or gating related checkers | 4d | 2015-04-02 | 2015-04-07 |  | 3d |  | start no earlier than 2015-04-02 | Vinay | 32h | 320 |
| 64 | 1.3 | **Non-AXI4 GenLPBindCheckers:** | 5d | 2015-04-23 | 2015-04-29 |  | 23d |  |  |  | 40h | 400 |
| 65 | 1.3.1 | Element level LP checker | 1d | 2015-04-23 | 2015-04-23 | 2, 60 | 27d |  | start no earlier than 2015-04-23 | Anup | 8h | 80 |
| 66 | 1.3.2 | Power Domain level Isolation LP checker | 1d | 2015-04-24 | 2015-04-24 | 2, 61 | 26d |  | start no earlier than 2015-04-24 | Anup | 8h | 80 |
| 67 | 1.3.3 | NSPS PD Sequence LP checker | 1d | 2015-04-27 | 2015-04-27 | 2, 62 | 25d |  | start no earlier than 2015-04-27 | Anup | 8h | 80 |
| 68 | 1.3.4 | Clock domain or gating related checkers | 2d | 2015-04-28 | 2015-04-29 | 2, 63 | 23d |  | start no earlier than 2015-04-28 | Anup | 16h | 160 |
| 69 | 1.1.5 | **CPFs for Scan** | 37d | 2015-03-16 | 2015-05-05 |  | 19d |  |  |  | 32h | 320 |
| 70 | 1.1.5.1 | Definition of Scan aware synthesis strategy | 2d | 2015-03-16 | 2015-03-17 |  | 52d | 33d | start no earlier than 2015-03-16 | Rajesh | 16h | 160 |
| 71 | 1.1.5.2 | GenCPF update for Scan | 2d | 2015-05-04 | 2015-05-05 | 70 | 19d |  | start no earlier than 2015-05-04 | Anup | 16h | 160 |
| 72 | 4.2 | **XTOR development:** | 6d | 2015-03-17 | 2015-03-24 |  | 44d | 0d |  |  | 48h | 480 |
| 73 | 4.2.2 | SYNC_UNIT design | 2d | 2015-03-23 | 2015-03-24 |  | 44d |  | start no earlier than 2015-03-23 | Vishnu | 16h | 160 |
| 74 | 4.2.3 | CXT changes for sync | 2d | 2015-03-17 | 2015-03-18 |  | 48d |  | start no earlier than 2015-03-17 | JJ | 16h | 160 |
| 75 | 4.2.4 | AHBXTOR changes for sync | 1d | 2015-03-19 | 2015-03-19 |  | 47d |  | start no earlier than 2015-03-19 | JJ | 8h | 80 |
| 76 | 4.2.5 | AMBAXTOR (Sanity) changes for sync | 1d | 2015-03-20 | 2015-03-20 |  | 46d |  | start no earlier than 2015-03-20 | JJ | 8h | 80 |
| 77 | 4.6 | **Nemesis traffic generation** | 17d | 2015-03-25 | 2015-04-16 |  | 32d |  |  |  | 136h | 1,360 |
| 78 | 4.6.1 | SYNC_UNIT traffic generation * | 1d | 2015-03-25 | 2015-03-25 | 20, 28, 72 | 48d |  | start no earlier than 2015-03-18 | JJ | 8h | 80 |
| 79 | 4.6.2 | Power and Clock gating/enabling * | 5d | 2015-03-26 | 2015-04-01 | 20, 28, 72 | 43d |  | start no earlier than 2015-03-26 | JJ | 40h | 400 |
| 80 | 4.6.3 | Dynamic change of frequences or DVFS * | 4d | 2015-04-02 | 2015-04-07 | 20, 28, 72 | 39d |  | start no earlier than 2015-04-02 | JJ | 32h | 320 |
| 81 | 4.6.4 | Cold boot randomization * | 2d | 2015-04-08 | 2015-04-09 | 20, 28, 72 | 37d |  | start no earlier than 2015-04-08 | JJ | 16h | 160 |
| 82 | 4.6.5 | Error scenarios for LP * | 5d | 2015-04-10 | 2015-04-16 | 20, 28, 72 | 32d |  | start no earlier than 2015-04-10 | JJ | 40h | 400 |
| 83 | 4.8 | AXI4 CDC runs | 5d | 2015-04-21 | 2015-04-27 | 11, 49 | 5d | 0d | finish no earlier than 2015-04-10 | Sandip | 40h | 400 |
| 84 | 4.9 | AXI4 Synthesis runs | 10d | 2015-04-27 | 2015-05-08 | 50, 11 | 0d |  | finish no earlier than 2015-04-24 | Rajesh | 80h | 800 |
| 85 | 4.10 | CLP NW Regression health (AXI4 100%, Non-AXI4 70%) | 4d | 2015-04-09 | 2015-04-14 | 51 | 26d | 0d |  | Santhosh [25%] | 8h | 80 |
| 86 | 4.11 | LPS NW Regression health (AXI4 100%, Non-AXI4 70%) w/o host checkers | 10d | 2015-04-22 | 2015-05-05 | 52 | 1d | 0d | start no earlier than 2015-04-21 | Vinay [25%] | 20h | 200 |
| 87 | 4.12 | Code Coverage (AXI4 100%, Non-AXI4 70%) | 10d | 2015-04-22 | 2015-05-05 | 53 | 2d | 0d |  | Harsha [75%] | 60h | 600 |
| 88 | 4.13 | Functional Coverage Coding (50%) | 15d | 2015-04-10 | 2015-05-01 | 59 | 0.67d | 0d | start no earlier than 2015-04-10 | Vinay [25%]; Santhosh [25%] | 60h | 600 |

| ID | WBS | Task | Duration | Start | Finish | Predecessors | Total slack | Free slack | Constraint | Resources | Work | Cost |
| --- | --- | --- | --- | --- | --- | --- | --- | --- | --- | --- | --- | --- |
| 89 | 5 | **Phase1 M5** | 26d | 2015-04-15 | 2015-05-20 |  | 8d |  |  |  | 492h | 4,920 |
| 90 | 3 | **SW Verif** | 14d | 2015-04-22 | 2015-05-11 |  | 15d |  |  |  | 216h | 2,160 |
| 91 | 3.1 | **Testplan:** | 5d | 2015-04-22 | 2015-04-28 |  | 15d | 0d |  |  | 40h | 400 |
| 92 | 3.1.1 | Tune_power | 3d | 2015-04-22 | 2015-04-24 |  | 17d |  | start no earlier than 2015-04-22 | Vishnu | 24h | 240 |
| 93 | 3.1.2 | CPFs | 1d | 2015-04-27 | 2015-04-27 |  | 16d |  | start no earlier than 2015-04-27 | Vishnu | 8h | 80 |
| 94 | 3.1.3 | LP RTL | 1d | 2015-04-28 | 2015-04-28 |  | 15d |  | start no earlier than 2015-04-28 | Vishnu | 8h | 80 |
| 95 | 3.2 | **Verif** | 9d | 2015-04-29 | 2015-05-11 |  | 15d |  |  |  | 176h | 1,760 |
| 96 | 3.2.1 | Tune_power | 4d | 2015-04-29 | 2015-05-04 | 91 | 20d |  | start no earlier than 2015-03-25 | Bhum | 32h | 320 |
| 97 | 3.2.2 | CPFs | 4d | 2015-04-29 | 2015-05-04 | 91 | 20d |  | start no earlier than 2015-04-29 | Infonam1 | 32h | 320 |
| 98 | 3.2.3 | LP RTL | 9d | 2015-04-29 | 2015-05-11 | 91 | 15d |  | start no earlier than 2015-04-29 | Infonam2 | 72h | 720 |
| 99 | 3.2.4 | LP Property Coverage monitor | 5d | 2015-05-05 | 2015-05-11 | 91 | 15d |  | start no earlier than 2015-05-05 | Bhum | 40h | 400 |
| 100 | 5.2 | Functional Coverage Coding (100%) | 11d | 2015-05-01 | 2015-05-18 | 88 | 0.67d | 0d |  | Vinay [25%]; Santhosh [25%] | 44h | 440 |
| 101 | 5.3 | CLP NW Regression health (AXI4 100%, Non-AXI4 90%) | 4d | 2015-04-15 | 2015-04-20 | 85 | 26d | 0d |  | Santhosh [25%] | 8h | 80 |
| 102 | 5.4 | LPS NW Regression health (AXI4 100%, Non-AXI4 90%) | 10d | 2015-05-06 | 2015-05-19 | 86 | 1d | 0d |  | Vinay [25%] | 20h | 200 |
| 103 | 5.5 | Code Coverage (AXI4 100%, Non-AXI4 90%) | 10d | 2015-05-06 | 2015-05-19 | 87 | 2d | 0d |  | Vishnu [25%] | 20h | 200 |
| 104 | 5.6 | Functional Coverage (50%) | 10d | 2015-05-01 | 2015-05-15 | 88 | 1.67d | 1d |  | Vinay [25%]; Santhosh [25%] | 40h | 400 |
| 105 | 5.7 | Non-AXI4 CDC runs | 10d | 2015-04-28 | 2015-05-11 | 83 | 5d | 0d |  | Sandip | 80h | 800 |
| 106 | 5.8 | Non-AXI4 Synthesis runs | 8d | 2015-05-11 | 2015-05-20 | 84 | 0d |  |  | Rajesh | 64h | 640 |
| 107 | 6 | **Phase1 M6** | 30d | 2015-04-21 | 2015-06-01 |  | 0d |  |  |  | 330h | 3,300 |
| 108 | 4.16 | Sanity bench development for LP | 5d | 2015-05-11 | 2015-05-15 |  | 1d | 0d | start no earlier than 2015-05-11 | Santhosh [50%] | 20h | 200 |
| 109 | 4.17 | Sanity bench Regressions for LP | 10d | 2015-05-18 | 2015-05-29 | 108 | 1d |  |  | Vinay [25%] | 20h | 200 |
| 110 | 6.3 | Release Documentation | 10d | 2015-05-04 | 2015-05-15 |  | 11d |  | start no earlier than 2015-05-04 | Vishnu [75%] | 60h | 600 |
| 111 | 6.4 | Functional Coverage (100%) | 10d | 2015-05-18 | 2015-06-01 | 100, 104 | 0.67d |  |  | Vinay [25%]; Santhosh [25%] | 40h | 400 |
| 112 | 6.5 | CLP NW Regression health (100%) | 4d | 2015-04-21 | 2015-04-24 | 101 | 26d |  |  | Santhosh [25%] | 8h | 80 |
| 113 | 6.6 | LPS NW Regression health (100%) | 8d | 2015-05-20 | 2015-05-29 | 102 | 1d |  |  | Vinay [25%] | 16h | 160 |
| 114 | 6.7 | Code Coverage (100%) | 7d | 2015-05-20 | 2015-05-28 | 103 | 2d |  |  | Vishnu [25%] | 14h | 140 |
| 115 | 6.8 | CDC runs on customer and super cfgs | 10d | 2015-05-12 | 2015-05-25 | 105 | 5d |  |  | Sandip | 80h | 800 |
| 116 | 6.9 | CLP and RC at pre and post synthesis on customer and super cfgs | 8d | 2015-05-21 | 2015-06-01 | 106 | 0d |  |  | Rajesh | 64h | 640 |
| 117 | 6.10 | Checklist status review | 4d | 2015-05-27 | 2015-06-01 |  | 0d |  | start no earlier than 2015-05-27 | Vishnu [25%] | 8h | 80 |
