# LP_v2_Phase1_from_MP.xml

Schedule from MS Project XML, 2015-02-23 to 2015-06-24, costs in $, A marks actual dates.

## Calendars

- Standard[Imported][Imported][Imported]: Mon-Fri 08:00-12:00, 13:00-17:00; Sat-Sun off.

## Resources

| Resource | Rate |
| --- | --- |
| Unassigned |  |
| Anup | 10 |
| Vishnu | 10 |
| Santhosh | 10 |
| Vinay | 10 |
| Harsha | 10 |
| Sailesh | 10 |
| Bhum | 10 |
| Eric | 10 |
| Rimu | 10 |
| Joji | 10 |
| JJ | 10 |
| Kiran | 10 |
| Joe | 10 |
| Sandip | 10 |
| Rajesh | 10 |
| Infonam1 | 10 |
| Infonam2 | 10 |
| Test2 | 10 |
| Jaya | 10 |
| Infonam3 | 10 |

## Schedule

| ID | WBS | Task | Duration | Start | Finish | Predecessors | Complete | Remaining | Total slack | Free slack | Constraint | Resources | Work | Actual work | Cost | Actual cost |
| --- | --- | --- | --- | --- | --- | --- | --- | --- | --- | --- | --- | --- | --- | --- | --- | --- |
| 1 | 1 | **Phase1 M1** | 53d | 2015-02-23 A | 2015-05-06 |  | 49% | 26.9d | 32d |  |  |  | 592h | 284h | 5,920 | 2,840 |
| 2 | 2 | **RTL Design** | 53d | 2015-02-23 A | 2015-05-06 |  | 30% | 36.91d | 32d | 8d |  |  | 288h | 92h | 2,880 | 920 |
| 3 | 2.1 | Micro-arch document | 3d | 2015-02-23 A | 2015-02-25 A |  | 100% |  |  |  |  | Joji; Rimu | 48h | 48h | 480 | 480 |
| 4 | 2.5 | MB changes | 5d | 2015-04-09 A | 2015-04-15 |  | 60% | 2d | 1d | 0d | start no earlier than 2015-04-09 | Joji | 40h | 24h | 400 | 240 |
| 5 | 2.6 | SB and RTR changes | 5d | 2015-04-16 A | 2015-04-22 | 3, 4 | 20% | 4d | 0d |  | start no earlier than 2015-03-16 | Rimu | 40h | 8h | 400 | 80 |
| 6 | 2.3 | Isolation polarity changes for output ports * | 5d | 2015-04-23 | 2015-04-29 | 4, 5 |  |  | 0d |  |  | Joji | 40h |  | 400 |  |
| 7 | 2.2 | V1 arch RTL cleanup in the design | 5d | 2015-04-30 | 2015-05-06 | 6 |  |  | 32d |  | start no earlier than 2015-03-09 | Rimu; Joji | 80h |  | 800 |  |
| 8 | 2.4 | **NSPS:** | 5d | 2015-04-23 A | 2015-04-29 |  | 30% | 3.5d | 37d |  |  |  | 40h | 12h | 400 | 120 |
| 9 | 2.4.1 | Aggregation logic | 2d | 2015-04-28 | 2015-04-29 | 10 |  |  | 37d |  | start no earlier than 2015-03-23 | Rimu | 16h |  | 160 |  |
| 10 | 2.4.2 | PDS | 3d | 2015-04-23 A | 2015-04-27 | 4, 5 | 50% | 1.5d | 37d | 0d | start no earlier than 2015-04-20 | Rimu | 24h | 12h | 240 | 120 |
| 11 | 1.7 | **Gen_ip:** | 38d | 2015-03-11 A | 2015-05-01 |  | 50% | 19d | 0d |  |  |  | 80h | 40h | 800 | 400 |
| 12 | 1.7.1 | Valid traffic flow with PD information | 3d | 2015-03-11 A | 2015-03-13 A |  | 100% |  |  |  | start no earlier than 2015-03-11 | Anup | 24h | 24h | 240 | 240 |
| 13 | 1.2.2 | Valid traffic flow with CD information | 2d | 2015-04-20 A | 2015-04-21 A |  | 100% |  |  |  | start no earlier than 2015-04-20 | Anup | 16h | 16h | 160 | 160 |
| 14 | 1.7.2 | Cleanup of V1 architecture code | 1d | 2015-04-16 | 2015-04-16 |  |  |  | 7d | 0d | start no earlier than 2015-04-16 | Eric | 8h |  | 80 |  |
| 15 | 1.7.3 | Cleanup for REGBUS | 2d | 2015-04-17 | 2015-04-20 | 14 |  |  | 7d |  |  | Eric | 16h |  | 160 |  |
| 16 | 1.7.4 | V2 Architecture integration | 2d | 2015-04-30 | 2015-05-01 | 15, 6, 4, 5 |  |  | 0d |  | start no earlier than 2015-03-25 | Eric | 16h |  | 160 |  |
| 17 | 1.5 | **Tune_power:** | 6d | 2015-04-21 | 2015-04-28 |  |  |  | 6d |  |  |  | 48h |  | 480 |  |
| 18 | 1.5.1 | Cleanup for REGBUS | 1d | 2015-04-21 | 2015-04-21 |  |  |  | 6d | 0d | start no earlier than 2015-04-21 | Sailesh | 8h |  | 80 |  |
| 19 | 1.5.2 | Support for V2 architecture | 5d | 2015-04-22 | 2015-04-28 | 18 |  |  | 6d | 0d |  | Sailesh | 40h |  | 400 |  |
| 20 | 4.2 | **TB XTOR Sync changes** | 6d | 2015-03-17 A | 2015-03-24 A |  | 100% |  |  |  |  |  | 48h | 48h | 480 | 480 |
| 21 | 4.2.2 | SYNC_UNIT design | 2d | 2015-03-23 A | 2015-03-24 A |  | 100% |  |  |  | start no earlier than 2015-03-23 | Harsha | 16h | 16h | 160 | 160 |
| 22 | 4.2.3 | CXT changes for sync | 2d | 2015-03-17 A | 2015-03-18 A |  | 100% |  |  |  | start no earlier than 2015-03-17 | Joe | 16h | 16h | 160 | 160 |
| 23 | 4.2.4 | AHBXTOR changes for sync | 1d | 2015-03-19 A | 2015-03-19 A |  | 100% |  |  |  | start no earlier than 2015-03-19 | Jaya | 8h | 8h | 80 | 80 |
| 24 | 4.2.5 | AMBAXTOR (Sanity) changes for sync | 1d | 2015-03-20 A | 2015-03-20 A |  | 100% |  |  |  | start no earlier than 2015-03-20 | Joe | 8h | 8h | 80 | 80 |
| 25 | 4.2.1 | PMXTOR design | 6d | 2015-03-11 A | 2015-03-18 A |  | 100% |  |  |  | start no earlier than 2015-03-11 | Vishnu | 48h | 48h | 480 | 480 |
| 26 | 1.6 | GenStreamX changes for LP TB integration | 3d | 2015-05-04 | 2015-05-06 | 11, 20, 25 |  |  | 0d |  | start no earlier than 2015-05-04 | Santhosh | 24h |  | 240 |  |
| 27 | 4.1 | Test/Coverage Plan | 7d | 2015-03-02 A | 2015-03-10 A |  | 100% |  |  |  | start no earlier than 2015-03-02 | Vishnu | 56h | 56h | 560 | 560 |

Notes:
- 4: Joji gave a patch to Rimu on 04_17 but cleanup yet to be done
- 6: This task is not just Joji and Rimu, other logic design block owner have to make sure the isolated values are low/zero.
- 14: Need to get information about what RTL will be cleaned-up, and appropriately cleanup in NocStudio code.
- 15: Need to get information about what RTL will be cleaned-up, and appropriately cleanup in NocStudio code.

| ID | WBS | Task | Duration | Start | Finish | Predecessors | Complete | Remaining | Total slack | Free slack | Constraint | Resources | Work | Actual work | Cost | Actual cost |
| --- | --- | --- | --- | --- | --- | --- | --- | --- | --- | --- | --- | --- | --- | --- | --- | --- |
| 28 | 2 | **Phase1 M2** | 30d | 2015-04-02 A | 2015-05-13 |  | 7% | 27.87d | 30d |  |  |  | 304h | 25.6h | 3,040 | 256 |
| 29 | 1.1 | **AXI4 GenCPF:** | 8d | 2015-04-22 | 2015-05-01 |  |  |  | 1d | 0d |  |  | 64h |  | 640 |  |
| 30 | 1.1.1 | Cleanup for REGBUS | 1d | 2015-04-22 | 2015-04-22 | 13 |  |  | 1d | 0d | start no earlier than 2015-03-16 | Anup | 8h |  | 80 |  |
| 31 | 1.1.2 | Changes from pin-level to PD level Iso rules | 1d | 2015-04-23 | 2015-04-23 | 30 |  |  | 1d | 0d | start no earlier than 2015-03-17 | Anup | 8h |  | 80 |  |
| 32 | 1.1.3 | RTL grouping | 5d | 2015-04-24 | 2015-04-30 | 31 |  |  | 1d | 0d | start no earlier than 2015-03-18 | Anup | 40h |  | 400 |  |
| 33 | 1.1.4 | Tech and Lib pointers | 1d | 2015-05-01 | 2015-05-01 | 32 |  |  | 1d | 0d | start no earlier than 2015-03-25 | Anup | 8h |  | 80 |  |
| 34 | 4.13 | CLP scritps | 2d | 2015-05-04 | 2015-05-05 | 29 |  |  | 1d |  | start no earlier than 2015-04-23 | Harsha | 16h |  | 160 |  |
| 35 | 4.6 | **Nemesis traffic generation** | 22d | 2015-04-02 A | 2015-05-01 |  | 23% | 16.97d | 12d | 7d |  |  | 112h | 25.6h | 1,120 | 256 |
| 36 | 4.6.1 | SYNC_UNIT traffic generation * | 1d | 2015-04-20 A | 2015-04-20 |  | 70% | 0.3d | 2.5d | 0d | start no earlier than 2015-03-18 | Santhosh | 8h | 5.6h | 80 | 56 |
| 37 | 4.6.2 | Power and Clock gating/enabling * | 5d | 2015-04-21 A | 2015-04-27 | 36 | 50% | 2.5d | 12d | 0d | start no earlier than 2015-03-26 | Santhosh | 40h | 20h | 400 | 200 |
| 38 | 4.6.3 | Dynamic change of frequences or DVFS * | 4d | 2015-04-02 | 2015-04-07 |  |  |  | 30d |  | start no earlier than 2015-04-02 | JJ | 32h |  | 320 |  |
| 39 | 4.6.4 | Cold boot randomization * | 2d | 2015-04-28 | 2015-04-29 | 37 |  |  | 12d | 0d | start no earlier than 2015-04-08 | Santhosh | 16h |  | 160 |  |
| 40 | 4.6.5 | Error scenarios for LP * | 2d | 2015-04-30 | 2015-05-01 | 39 |  |  | 12d |  | start no earlier than 2015-04-10 | Santhosh | 16h |  | 160 |  |
| 41 | 4.8 | **AXI4 LP Checkers work** | 4d | 2015-05-07 | 2015-05-12 |  |  |  | 5d |  |  |  | 44h |  | 440 |  |
| 42 | 4.8.1 | Element level LP checker | 2d | 2015-05-07 | 2015-05-08 | 11, 26, 29 |  |  | 24d | 0d | start no earlier than 2015-04-20 | Vinay | 16h |  | 160 |  |
| 43 | 4.8.2 | Power Domain level Isolation LP checker | 2d | 2015-05-07 | 2015-05-08 | 11, 26, 34, 29 |  |  | 5d | 0d | start no earlier than 2015-03-09 | Harsha | 16h |  | 160 |  |
| 44 | 4.8.3 | NSPS PD Sequence LP checker | 2d | 2015-05-11 | 2015-05-12 | 43, 11, 26, 29 |  |  | 5d | 0d | start no earlier than 2015-05-08 | Santhosh [25%]; Harsha [75%] | 12h |  | 120 |  |
| 45 | 2.5 | CLP and LPS AXI4 hand written cfgs passing | 5d | 2015-05-07 | 2015-05-13 | 11, 17, 26, 34, 20, 25, 29 |  |  | 0d |  |  | Vishnu [50%] | 20h |  | 200 |  |
| 46 | 2.6 | Test/Coverage Plan Review | 2d | 2015-04-23 | 2015-04-24 |  |  |  | 23d | 0d | start no earlier than 2015-04-23 | Vishnu | 16h |  | 160 |  |
| 47 | 2.7 | Verification Plan Documentation and Review | 8d | 2015-05-04 | 2015-05-13 | 74 |  |  | 30d |  |  | Vishnu [50%] | 32h |  | 320 |  |
| 48 | 3 | **Phase1 M3** | 18d | 2015-05-04 | 2015-05-27 |  |  |  | 8d |  |  |  | 368h |  | 3,680 |  |
| 49 | 1.3 | **AXI4 GenLPBindCheckers:** | 3d | 2015-05-11 | 2015-05-13 |  |  |  | 28d |  |  |  | 24h |  | 240 |  |
| 50 | 1.3.1 | Element level LP checker | 1d | 2015-05-11 | 2015-05-11 | 11, 42 |  |  | 36d | 0d | start no earlier than 2015-03-26 | Anup | 8h |  | 80 |  |
| 51 | 1.3.2 | Power Domain level Isolation LP checker | 1d | 2015-05-12 | 2015-05-12 | 11, 50, 43 |  |  | 36d | 0d |  | Anup | 8h |  | 80 |  |
| 52 | 1.3.3 | NSPS PD Sequence LP checker | 1d | 2015-05-13 | 2015-05-13 | 11, 51, 44 |  |  | 28d | 0d | start no earlier than 2015-05-13 | Anup | 8h |  | 80 |  |

| ID | WBS | Task | Duration | Start | Finish | Predecessors | Total slack | Free slack | Constraint | Resources | Work | Cost |
| --- | --- | --- | --- | --- | --- | --- | --- | --- | --- | --- | --- | --- |
| 53 | 1.1 | **Non-AXI4 GenCPF:** | 3d | 2015-05-04 | 2015-05-06 |  | 20d | 0d |  |  | 24h | 240 |
| 54 | 1.1.2 | Changes from pin-level to PD level Iso rules | 1d | 2015-05-04 | 2015-05-04 | 33 | 28d | 0d | start no earlier than 2015-04-16 | Anup | 8h | 80 |
| 55 | 1.1.3 | RTL grouping | 1d | 2015-05-05 | 2015-05-05 | 54, 32 | 28d | 0d | start no earlier than 2015-05-05 | Anup | 8h | 80 |
| 56 | 1.1.4 | Tech and Lib pointers | 1d | 2015-05-06 | 2015-05-06 | 55, 33 | 28d | 0d | start no earlier than 2015-04-22 | Anup | 8h | 80 |
| 57 | 1.3 | **Non-AXI4 GenLPBindCheckers:** | 3d | 2015-05-19 | 2015-05-21 |  | 24d |  |  |  | 24h | 240 |
| 58 | 1.3.1 | Element level LP checker | 1d | 2015-05-19 | 2015-05-19 | 2, 11, 53, 62 | 36d | 0d | start no earlier than 2015-04-23 | Anup | 8h | 80 |
| 59 | 1.3.2 | Power Domain level Isolation LP checker | 1d | 2015-05-20 | 2015-05-20 | 58, 2, 11, 53, 63 | 24d | 0d | start no earlier than 2015-05-06 | Anup | 8h | 80 |
| 60 | 1.3.3 | NSPS PD Sequence LP checker | 1d | 2015-05-21 | 2015-05-21 | 59, 2, 11, 53 | 24d |  | start no earlier than 2015-05-13 | Anup | 8h | 80 |
| 61 | 4.8 | **Non-AXI4 LP Checkers work** | 6d | 2015-05-11 | 2015-05-18 |  | 24d |  |  |  | 56h | 560 |
| 62 | 4.8.1 | Element level LP checker | 6d | 2015-05-11 | 2015-05-18 | 42 | 24d | 0d | start no earlier than 2015-03-25 | Vinay | 48h | 480 |
| 63 | 4.8.2 | Power Domain level Isolation LP checker | 1d | 2015-05-13 | 2015-05-13 | 43, 44 | 28d | 4d | start no earlier than 2015-03-18 | Harsha | 8h | 80 |
| 64 | 3.5 | AXI4 Handwritten cfgs CDC runs | 5d | 2015-05-14 | 2015-05-20 | 45 | 5d | 0d | start no earlier than 2015-04-14 | Sandip | 40h | 400 |
| 65 | 3.6 | AXI4 Handwritten cfgs Synthesis runs | 10d | 2015-05-14 | 2015-05-27 | 45 | 2d | 0d | finish no earlier than 2015-04-24 | Rajesh | 80h | 800 |
| 66 | 3.7 | CLP NW Regression health (AXI4 80%) | 10d | 2015-05-14 | 2015-05-27 | 45 | 0d |  |  | Vishnu [25%] | 20h | 200 |
| 67 | 3.8 | LPS NW Regression health (AXI4 80% w/o host checkers) | 10d | 2015-05-14 | 2015-05-27 | 45 | 0d |  | start no earlier than 2015-04-08 | Vishnu [25%] | 20h | 200 |
| 68 | 3.9 | Code Coverage (AXI4 80%) | 10d | 2015-05-14 | 2015-05-27 | 45 | 3d | 0d | start no earlier than 2015-05-13 | Harsha [50%]; Rimu [25%]; Joji [25%] | 80h | 800 |
| 69 | 4 | **Phase1 M4** | 33d | 2015-04-27 | 2015-06-10 |  | 10d |  |  |  | 822h | 8,220 |
| 70 | 3 | **SW Verif** | 23d | 2015-04-27 | 2015-05-27 |  | 20d |  |  |  | 352h | 3,520 |
| 71 | 3.1 | **Testplan:** | 5d | 2015-04-27 | 2015-05-01 |  | 23d |  |  |  | 40h | 400 |
| 72 | 3.1.1 | Tune_power | 3d | 2015-04-27 | 2015-04-29 | 46 | 35d | 0d | start no earlier than 2015-04-20 | Vishnu | 24h | 240 |
| 73 | 3.1.2 | CPFs | 1d | 2015-04-30 | 2015-04-30 | 72, 46 | 35d | 0d | start no earlier than 2015-04-27 | Vishnu | 8h | 80 |
| 74 | 3.1.3 | LP RTL | 1d | 2015-05-01 | 2015-05-01 | 73, 46 | 35d | 0d | start no earlier than 2015-04-28 | Vishnu | 8h | 80 |
| 75 | 3.2 | **Verif** | 15d | 2015-05-07 | 2015-05-27 |  | 20d |  |  |  | 312h | 3,120 |
| 76 | 3.2.1 | Tune_power | 6d | 2015-05-07 | 2015-05-14 | 74, 53 | 41d |  | start no earlier than 2015-03-25 | Bhum | 48h | 480 |
| 77 | 3.2.2 | CPFs | 8d | 2015-05-07 | 2015-05-18 | 74, 53 | 39d |  | start no earlier than 2015-04-29 | Infonam1 | 64h | 640 |
| 78 | 3.2.3 | LP RTL | 10d | 2015-05-07 | 2015-05-20 | 74, 53 | 37d |  | start no earlier than 2015-04-29 | Infonam2 | 80h | 800 |
| 79 | 3.2.4 | LP Property Coverage monitor | 15d | 2015-05-07 | 2015-05-27 | 74, 53 | 32d |  | start no earlier than 2015-05-05 | Infonam3 | 120h | 1,200 |
| 80 | 4.4 | Error PD & CD Sequence test | 6d | 2015-05-13 | 2015-05-20 | 35, 44 | 5d | 0d | start no earlier than 2015-03-30 | Santhosh | 48h | 480 |

| ID | WBS | Task | Duration | Start | Finish | Predecessors | Total slack | Free slack | Constraint | Resources | Work | Cost |
| --- | --- | --- | --- | --- | --- | --- | --- | --- | --- | --- | --- | --- |
| 81 | 1.1.6 | **CPFs for DVFS** | 8d | 2015-04-29 | 2015-05-08 |  | 31d |  |  |  | 48h | 480 |
| 82 | 1.1.6.1 | Definition of DVFS modes of operation | 4d | 2015-04-29 | 2015-05-04 | 19 | 41d | 2d | start no earlier than 2015-04-20 | Sailesh | 32h | 320 |
| 83 | 1.1.6.2 | GenCPF update for DVFS | 2d | 2015-05-07 | 2015-05-08 | 82, 56 | 39d | 3d | start no earlier than 2015-05-04 | Anup | 16h | 160 |
| 84 | 1.1.5 | **CPFs for Scan** | 12d | 2015-04-30 | 2015-05-15 |  | 28d |  |  |  | 32h | 320 |
| 85 | 1.1.5.1 | Definition of Scan aware synthesis strategy | 2d | 2015-04-30 | 2015-05-01 |  | 44d | 8d | start no earlier than 2015-04-30 | Rajesh | 16h | 160 |
| 86 | 1.1.5.2 | GenCPF update for Scan | 2d | 2015-05-14 | 2015-05-15 | 85, 83, 52 | 28d |  | start no earlier than 2015-05-11 | Anup | 16h | 160 |
| 87 | 4.5 | AXI4 and Non-AXI4 CDC runs | 10d | 2015-05-21 | 2015-06-03 | 11, 64 | 5d | 0d | finish no earlier than 2015-04-10 | Sandip | 80h | 800 |
| 88 | 4.6 | AXI4 and Non-AXI4 Synthesis runs | 10d | 2015-05-28 | 2015-06-10 | 65, 11 | 2d | 0d | finish no earlier than 2015-04-24 | Rajesh | 80h | 800 |
| 89 | 4.7 | Functional Coverage Coding (70%) | 10d | 2015-05-21 | 2015-06-03 | 80, 44 | 5d | 0d | start no earlier than 2015-05-21 | Vinay [25%]; Santhosh [50%] | 50h | 500 |
| 90 | 4.8 | CLP NW Regression health (AXI4 100%, Non-AXI4 90%) | 10d | 2015-05-28 | 2015-06-10 | 66 | 0d |  |  | Santhosh [25%]; Vishnu [25%] | 40h | 400 |
| 91 | 4.9 | LPS NW Regression health (AXI4 100%, Non-AXI4 90%) | 10d | 2015-05-28 | 2015-06-10 | 67 | 0d |  | start no earlier than 2015-04-21 | Vinay [25%]; Vishnu [25%] | 40h | 400 |
| 92 | 4.10 | Code Coverage (AXI4 100%, Non-AXI4 90%) | 10d | 2015-05-28 | 2015-06-10 | 68 | 3d | 0d | start no earlier than 2015-05-28 | Harsha [50%] | 40h | 400 |
| 93 | 4.11 | Functional Coverage (50%) | 3d | 2015-06-04 | 2015-06-08 | 89 | 7d | 2d |  | Harsha [50%] | 12h | 120 |
| 94 | 5 | **Phase1 M5** | 20d | 2015-05-28 | 2015-06-24 |  | 0d |  |  |  | 306h | 3,060 |
| 95 | 5.1 | Release Documentation | 15d | 2015-05-28 | 2015-06-17 | 66, 67 | 5d |  | start no earlier than 2015-05-28 | Vishnu [50%] | 60h | 600 |
| 96 | 5.2 | Functional Coverage Coding (100%) | 5d | 2015-06-04 | 2015-06-10 | 89 | 5d | 0d |  | Vinay [25%]; Santhosh [50%] | 30h | 300 |
| 97 | 5.3 | Functional Coverage (100%) | 5d | 2015-06-11 | 2015-06-17 | 96, 93 | 5d |  | start no earlier than 2015-06-11 | Vinay [25%] | 10h | 100 |
| 98 | 5.4 | CLP NW Regression health (100%) | 10d | 2015-06-11 | 2015-06-24 | 90 | 0d |  |  | Vinay [25%] | 20h | 200 |
| 99 | 5.5 | LPS NW Regression health (100%) | 10d | 2015-06-11 | 2015-06-24 | 91 | 0d |  |  | Vinay [25%] | 20h | 200 |
| 100 | 5.6 | Code Coverage (100%) | 7d | 2015-06-11 | 2015-06-19 | 92 | 3d |  |  | Vinay [25%] | 14h | 140 |
| 101 | 5.7 | CDC runs on customer and super cfgs | 10d | 2015-06-04 | 2015-06-17 | 87 | 5d |  |  | Sandip | 80h | 800 |
| 102 | 5.8 | CLP and RC at pre and post synthesis on customer and super cfgs | 8d | 2015-06-11 | 2015-06-22 | 88 | 2d |  |  | Rajesh | 64h | 640 |
| 103 | 5.9 | Checklist status review | 4d | 2015-06-11 | 2015-06-16 | 90, 91 | 6d |  | start no earlier than 2015-05-27 | Vishnu [25%] | 8h | 80 |
